# Создание карты города

Schedule from MS Project, 2025-03-03 to 2025-09-26, costs in ₽.
Команда разработчиков из 16 человек занимается созданием карты города на основе собственного модуля отображения. Проект должен быть завершен в течение 6 месяцев. Бюджет проекта: 50000 рублей.

## Calendars

- Стандартный: Mon-Fri 09:00-13:00, 14:00-18:00; Sat-Sun off. Exceptions (off unless hours are given): 2025-03-07 09:00-13:00, 14:00-17:00 (Сокращенный рабочий день перед 8 марта), 2025-04-30 09:00-13:00, 14:00-17:00 (Сокращенный рабочий день перед 1 мая), 2025-05-01 (Праздник Весны и Труда (+ перенос с 04.01.25)), 2025-05-02 (Перенос с 04.01.25), 2025-05-08 (23 февраля (перенос)), 2025-05-09 to 2025-05-11 (День Победы), 2025-06-11 09:00-13:00, 14:00-17:00 (Сокращенный рабочий день перед 12 июня), 2025-06-12 (День России), 2025-06-13 (8 марта (перенос)).

## Resources

| Resource | Group | Rate | Cost per use |
| --- | --- | --- | --- |
| Ведущий программист | Программирование | 10 | 100 |
| Программист#1 | Программирование | 7 | 50 |
| Программист#2 | Программирование | 7 | 50 |
| Программист#3 | Программирование | 7 | 50 |
| Программист#4 | Программирование | 7 | 50 |
| Системный аналитик | Анализ | 20 | 300 |
| Художник-дизайнер | Дизайн | 8 | 70 |
| Технический писатель | Документация | 5 | 20 |
| Web-дизайнер | Internet | 7 | 50 |
| 3D аниматор | Дизайн | 8 | 70 |
| Мультимедиа-корреспондент | М-медиа | 3 | 20 |
| Наборщик данных#1 | Ввод данных | 2 | 10 |
| Наборщик данных#2 | Ввод данных | 2 | 10 |
| Наборщик данных#3 | Ввод данных | 2 | 10 |
| Наборщик данных#4 | Ввод данных | 2 | 10 |
| Наборщик данных#5 | Ввод данных | 2 | 10 |
| Аренда сервера | Аренда | 2 |  |

## Schedule

| ID | WBS | Task | Type | Duration | Start | Finish | Predecessors | Total slack | Free slack | Resources | Work | Cost |
| --- | --- | --- | --- | --- | --- | --- | --- | --- | --- | --- | --- | --- |
| 1 | 1 | Начало проекта | milestone | 0w | 2025-03-03 09:00 | 2025-03-03 09:00 |  | 71.5d | 0d |  |  |  |
| 2 | 2 | **Создание интерфейса** |  | 112.12d | 2025-03-03 09:00 | 2025-08-14 13:00 | 1 | 0d |  |  | 560h | 5,550 |
| 3 | 2.1 | **Разработка дизайна интерфейса** |  | 25.62d | 2025-03-03 09:00 | 2025-04-07 16:00 |  | 71.5d | 0d |  | 320h | 2,770 |
| 4 | 2.1.1 | Разработка 2D графических элементов |  | 3w | 2025-03-03 09:00 | 2025-03-24 13:00 |  | 71.5d | 0d | Художник-дизайнер | 120h | 1,030 |
| 5 | 2.1.2 | Разработка 3D графических элементов |  | 2w | 2025-03-03 09:00 | 2025-03-17 12:00 | 4SS | 71.5d | 0d | 3D аниматор | 80h | 710 |
| 6 | 2.1.3 | Создание заставки |  | 3w | 2025-03-17 12:00 | 2025-04-07 16:00 | 5 | 71.5d | 70d | 3D аниматор | 120h | 1,030 |
| 7 | 2.2 | Программирование интерфейса |  | 3w | 2025-07-24 14:00 | 2025-08-14 13:00 | 3, 12 | 0d |  | Программист#3; Программист#4 | 240h | 1,780 |
| 8 | 3 | **Построение базы объектов** |  | 85.12d | 2025-03-24 15:00 | 2025-07-29 18:00 |  | 42.25d |  | Аренда сервера | 5771h | 15,632 |
| 9 | 3.1 | Анализ и построение структуры базы объектов |  | 2w | 2025-03-24 15:00 | 2025-04-07 16:00 |  | 42.25d | 0d | Системный аналитик | 80h | 1,900 |
| 10 | 3.2 | Программирование средств обработки базы объектов |  | 3w | 2025-04-07 16:00 | 2025-04-28 16:00 | 9 | 42.25d | 0d | Программист#3; Программист#4 | 240h | 1,780 |
| 11 | 3.3 | Наполнение базы объектов |  | 12w | 2025-04-28 16:00 | 2025-07-29 18:00 | 10 | 42.25d |  | Наборщик данных#1; Наборщик данных#2; Наборщик данных#3; Наборщик данных#4; Наборщик данных#5 | 2400h | 4,850 |
| 12 | 4 | **Создание ядра GIS** |  | 97.12d | 2025-03-03 09:00 | 2025-07-24 13:00 |  | 0d |  |  | 1880h | 18,680 |
| 13 | 4.1 | Анализ и проектирование ядра |  | 3.08w | 2025-03-03 09:00 | 2025-03-24 13:00 |  | 0d |  | Системный аналитик; Ведущий программист | 240h | 4,000 |
| 14 | 4.2 | Создание модели ядра |  | 5.12w | 2025-03-24 14:00 | 2025-04-29 10:00 | 13 | 0d |  | Ведущий программист; Программист#1 | 400h | 3,550 |
| 15 | 4.3 | Тестирование модели ядра |  | 1w | 2025-04-29 10:00 | 2025-05-12 11:00 | 14 | 0d |  | Программист#1 | 40h | 330 |
| 16 | 4.4 | Создание рабочей версии ядра |  | 10.22w | 2025-05-12 11:00 | 2025-07-24 13:00 | 15 | 0d |  | Ведущий программист; Программист#1; Программист#2 | 1200h | 9,800 |
| 17 | 5 | Создание мультимедиа-наполнения |  | 6w | 2025-04-07 16:00 | 2025-05-26 15:00 | 3 | 86.5d | 83d | Мультимедиа-корреспондент | 240h | 740 |
| 18 | 6 | Создание справочной системы |  | 2w | 2025-08-25 17:00 | 2025-09-08 18:00 | 7 | 13.25d | 18d | Технический писатель | 80h | 420 |
| 19 | 7 | **Создание руководства пользователя** |  | 17.25d | 2025-07-31 14:00 | 2025-08-25 16:00 | 7FS-10d | 0d |  |  | 160h | 1,010 |
| 20 | 7.1 | Разработка дизайна руководства |  | 1w | 2025-07-31 14:00 | 2025-08-07 13:00 |  | 0d |  | Художник-дизайнер | 40h | 390 |
| 21 | 7.2 | Написание руководства пользователя |  | 3w | 2025-08-04 14:00 | 2025-08-25 16:00 | 20SS+2d | 0d |  | Технический писатель | 120h | 620 |
| 22 | 8 | **Создание web-сайта и поддержка** |  | 23.38d | 2025-08-04 14:00 | 2025-09-04 17:00 |  | 0d |  |  | 248h | 2,106 |
| 23 | 8.1 | Разработка структуры сайта |  | 1d | 2025-08-04 14:00 | 2025-08-05 13:00 | 21SS | 0d |  | Web-дизайнер | 8h | 106 |
| 24 | 8.2 | Разработка дизайна сайта |  | 1.43w | 2025-08-05 14:00 | 2025-08-14 15:00 | 23 | 0d |  | Web-дизайнер; 3D аниматор; Художник-дизайнер | 120h | 1,110 |
| 25 | 8.3 | Наполнение сайта |  | 3w | 2025-08-14 15:00 | 2025-09-04 17:00 | 24 | 0d |  | Web-дизайнер | 120h | 890 |
| 26 | 9 | Тестирование сайта |  | 4.08w | 2025-08-28 17:00 | 2025-09-26 11:00 | 22FS-1w | 0d |  | Ведущий программист; Программист#1; Программист#2 | 480h | 4,040 |
| 27 | 10 | Сдача сайта в эксплуатацию | milestone | 0w | 2025-09-26 11:00 | 2025-09-26 11:00 | 26 | 0d |  |  |  |  |

| ID | WBS | Task | Duration | Start | Finish | Total slack | Free slack | Constraint | Resources | Work | Cost |
| --- | --- | --- | --- | --- | --- | --- | --- | --- | --- | --- | --- |
| 28 | 11 | **Совещание** | 133.75d | 2025-03-05 10:00 | 2025-09-17 11:00 | 7d |  |  |  | 203h | 1,769 |
| 29 | 11.1 | Совещание 1 | 1h | 2025-03-05 10:00 | 2025-03-05 11:00 | 141.12d | 138.38d | start no earlier than 2025-03-05 10:00 | 3D аниматор; Web-дизайнер; Ведущий программист; Мультимедиа-корреспондент; Системный аналитик; Технический писатель; Художник-дизайнер | 7h | 61 |
| 30 | 11.2 | Совещание 2 | 1h | 2025-03-12 10:00 | 2025-03-12 11:00 | 136.25d | 133.5d | start no earlier than 2025-03-12 10:00 | 3D аниматор; Web-дизайнер; Ведущий программист; Мультимедиа-корреспондент; Системный аналитик; Технический писатель; Художник-дизайнер | 7h | 61 |
| 31 | 11.3 | Совещание 3 | 1h | 2025-03-19 10:00 | 2025-03-19 11:00 | 131.25d | 128.5d | start no earlier than 2025-03-19 10:00 | 3D аниматор; Web-дизайнер; Ведущий программист; Мультимедиа-корреспондент; Системный аналитик; Технический писатель; Художник-дизайнер | 7h | 61 |
| 32 | 11.4 | Совещание 4 | 1h | 2025-03-26 10:00 | 2025-03-26 11:00 | 126.25d | 123.5d | start no earlier than 2025-03-26 10:00 | 3D аниматор; Web-дизайнер; Ведущий программист; Мультимедиа-корреспондент; Системный аналитик; Технический писатель; Художник-дизайнер | 7h | 61 |
| 33 | 11.5 | Совещание 5 | 1h | 2025-04-02 10:00 | 2025-04-02 11:00 | 121.25d | 118.5d | start no earlier than 2025-04-02 10:00 | 3D аниматор; Web-дизайнер; Ведущий программист; Мультимедиа-корреспондент; Системный аналитик; Технический писатель; Художник-дизайнер | 7h | 61 |
| 34 | 11.6 | Совещание 6 | 1h | 2025-04-09 10:00 | 2025-04-09 11:00 | 116.25d | 113.5d | start no earlier than 2025-04-09 10:00 | 3D аниматор; Web-дизайнер; Ведущий программист; Мультимедиа-корреспондент; Системный аналитик; Технический писатель; Художник-дизайнер | 7h | 61 |
| 35 | 11.7 | Совещание 7 | 1h | 2025-04-16 10:00 | 2025-04-16 11:00 | 111.25d | 108.5d | start no earlier than 2025-04-16 10:00 | 3D аниматор; Web-дизайнер; Ведущий программист; Мультимедиа-корреспондент; Системный аналитик; Технический писатель; Художник-дизайнер | 7h | 61 |
| 36 | 11.8 | Совещание 8 | 1h | 2025-04-23 10:00 | 2025-04-23 11:00 | 106.25d | 103.5d | start no earlier than 2025-04-23 10:00 | 3D аниматор; Web-дизайнер; Ведущий программист; Мультимедиа-корреспондент; Системный аналитик; Технический писатель; Художник-дизайнер | 7h | 61 |
| 37 | 11.9 | Совещание 9 | 1h | 2025-04-30 10:00 | 2025-04-30 11:00 | 101.25d | 98.5d | start no earlier than 2025-04-30 10:00 | 3D аниматор; Web-дизайнер; Ведущий программист; Мультимедиа-корреспондент; Системный аналитик; Технический писатель; Художник-дизайнер | 7h | 61 |
| 38 | 11.10 | Совещание 10 | 1h | 2025-05-07 10:00 | 2025-05-07 11:00 | 98.38d | 95.62d | start no earlier than 2025-05-07 10:00 | 3D аниматор; Web-дизайнер; Ведущий программист; Мультимедиа-корреспондент; Системный аналитик; Технический писатель; Художник-дизайнер | 7h | 61 |
| 39 | 11.11 | Совещание 11 | 1h | 2025-05-14 10:00 | 2025-05-14 11:00 | 95.38d | 92.62d | start no earlier than 2025-05-14 10:00 | 3D аниматор; Web-дизайнер; Ведущий программист; Мультимедиа-корреспондент; Системный аналитик; Технический писатель; Художник-дизайнер | 7h | 61 |
| 40 | 11.12 | Совещание 12 | 1h | 2025-05-21 10:00 | 2025-05-21 11:00 | 90.38d | 87.62d | start no earlier than 2025-05-21 10:00 | 3D аниматор; Web-дизайнер; Ведущий программист; Мультимедиа-корреспондент; Системный аналитик; Технический писатель; Художник-дизайнер | 7h | 61 |
| 41 | 11.13 | Совещание 13 | 1h | 2025-05-28 10:00 | 2025-05-28 11:00 | 85.38d | 82.62d | start no earlier than 2025-05-28 10:00 | 3D аниматор; Web-дизайнер; Ведущий программист; Мультимедиа-корреспондент; Системный аналитик; Технический писатель; Художник-дизайнер | 7h | 61 |
| 42 | 11.14 | Совещание 14 | 1h | 2025-06-04 10:00 | 2025-06-04 11:00 | 80.38d | 77.62d | start no earlier than 2025-06-04 10:00 | 3D аниматор; Web-дизайнер; Ведущий программист; Мультимедиа-корреспондент; Системный аналитик; Технический писатель; Художник-дизайнер | 7h | 61 |
| 43 | 11.15 | Совещание 15 | 1h | 2025-06-11 10:00 | 2025-06-11 11:00 | 75.38d | 72.62d | start no earlier than 2025-06-11 10:00 | 3D аниматор; Web-дизайнер; Ведущий программист; Мультимедиа-корреспондент; Системный аналитик; Технический писатель; Художник-дизайнер | 7h | 61 |
| 44 | 11.16 | Совещание 16 | 1h | 2025-06-18 10:00 | 2025-06-18 11:00 | 72.5d | 69.75d | start no earlier than 2025-06-18 10:00 | 3D аниматор; Web-дизайнер; Ведущий программист; Мультимедиа-корреспондент; Системный аналитик; Технический писатель; Художник-дизайнер | 7h | 61 |
| 45 | 11.17 | Совещание 17 | 1h | 2025-06-25 10:00 | 2025-06-25 11:00 | 67.5d | 64.75d | start no earlier than 2025-06-25 10:00 | 3D аниматор; Web-дизайнер; Ведущий программист; Мультимедиа-корреспондент; Системный аналитик; Технический писатель; Художник-дизайнер | 7h | 61 |
| 46 | 11.18 | Совещание 18 | 1h | 2025-07-02 10:00 | 2025-07-02 11:00 | 62.5d | 59.75d | start no earlier than 2025-07-02 10:00 | 3D аниматор; Web-дизайнер; Ведущий программист; Мультимедиа-корреспондент; Системный аналитик; Технический писатель; Художник-дизайнер | 7h | 61 |
| 47 | 11.19 | Совещание 19 | 1h | 2025-07-09 10:00 | 2025-07-09 11:00 | 57.5d | 54.75d | start no earlier than 2025-07-09 10:00 | 3D аниматор; Web-дизайнер; Ведущий программист; Мультимедиа-корреспондент; Системный аналитик; Технический писатель; Художник-дизайнер | 7h | 61 |
| 48 | 11.20 | Совещание 20 | 1h | 2025-07-16 10:00 | 2025-07-16 11:00 | 52.5d | 49.75d | start no earlier than 2025-07-16 10:00 | 3D аниматор; Web-дизайнер; Ведущий программист; Мультимедиа-корреспондент; Системный аналитик; Технический писатель; Художник-дизайнер | 7h | 61 |
| 49 | 11.21 | Совещание 21 | 1h | 2025-07-23 10:00 | 2025-07-23 11:00 | 47.5d | 44.75d | start no earlier than 2025-07-23 10:00 | 3D аниматор; Web-дизайнер; Ведущий программист; Мультимедиа-корреспондент; Системный аналитик; Технический писатель; Художник-дизайнер | 7h | 61 |
| 50 | 11.22 | Совещание 22 | 1h | 2025-07-30 10:00 | 2025-07-30 11:00 | 42.5d | 39.75d | start no earlier than 2025-07-30 10:00 | 3D аниматор; Web-дизайнер; Ведущий программист; Мультимедиа-корреспондент; Системный аналитик; Технический писатель; Художник-дизайнер | 7h | 61 |
| 51 | 11.23 | Совещание 23 | 1h | 2025-08-06 10:00 | 2025-08-06 11:00 | 37.5d | 34.75d | start no earlier than 2025-08-06 10:00 | 3D аниматор; Web-дизайнер; Ведущий программист; Мультимедиа-корреспондент; Системный аналитик; Технический писатель; Художник-дизайнер | 7h | 61 |
| 52 | 11.24 | Совещание 24 | 1h | 2025-08-13 10:00 | 2025-08-13 11:00 | 32.5d | 29.75d | start no earlier than 2025-08-13 10:00 | 3D аниматор; Web-дизайнер; Ведущий программист; Мультимедиа-корреспондент; Системный аналитик; Технический писатель; Художник-дизайнер | 7h | 61 |
| 53 | 11.25 | Совещание 25 | 1h | 2025-08-20 10:00 | 2025-08-20 11:00 | 27.5d | 24.75d | start no earlier than 2025-08-20 10:00 | 3D аниматор; Web-дизайнер; Ведущий программист; Мультимедиа-корреспондент; Системный аналитик; Технический писатель; Художник-дизайнер | 7h | 61 |
| 54 | 11.26 | Совещание 26 | 1h | 2025-08-27 10:00 | 2025-08-27 11:00 | 22.5d | 19.75d | start no earlier than 2025-08-27 10:00 | 3D аниматор; Web-дизайнер; Ведущий программист; Мультимедиа-корреспондент; Системный аналитик; Технический писатель; Художник-дизайнер | 7h | 61 |
| 55 | 11.27 | Совещание 27 | 1h | 2025-09-03 10:00 | 2025-09-03 11:00 | 17.5d | 14.75d | start no earlier than 2025-09-03 10:00 | 3D аниматор; Web-дизайнер; Ведущий программист; Мультимедиа-корреспондент; Системный аналитик; Технический писатель; Художник-дизайнер | 7h | 61 |
| 56 | 11.28 | Совещание 28 | 1h | 2025-09-10 10:00 | 2025-09-10 11:00 | 12.5d | 9.75d | start no earlier than 2025-09-10 10:00 | 3D аниматор; Web-дизайнер; Ведущий программист; Мультимедиа-корреспондент; Системный аналитик; Технический писатель; Художник-дизайнер | 7h | 61 |
| 57 | 11.29 | Совещание 29 | 1h | 2025-09-17 10:00 | 2025-09-17 11:00 | 7.5d | 4.75d | start no earlier than 2025-09-17 10:00 | 3D аниматор; Web-дизайнер; Ведущий программист; Мультимедиа-корреспондент; Системный аналитик; Технический писатель; Художник-дизайнер | 7h | 61 |
