# Создать карту города на основе собственного модуля отображения

Schedule from MS Project, 2025-03-03 to 2025-08-22, status date 2025-05-12, costs in ₽, A marks actual dates.
Проект должен быть завершен в течение 6 месяцев; / Бюджет проекта: 50 000 рублей; / В команде 16 разработчиков.
·Проект должен быть завершен в течение 6 месяцев;/ ·Бюджет проекта: 50 000 рублей;/ ·В команде 16 разработчиков.

## Calendars

- Standard: Mon-Fri 08:00-12:00, 13:00-17:00; Sat-Sun off. Exceptions (off unless hours are given): 2025-03-07 09:00-13:00, 14:00-17:00 (8 марта), 2025-05-01 to 2025-05-02 (1 мая), 2025-05-08 to 2025-05-09 (9 мая), 2025-06-11 09:00-13:00, 14:00-17:00 (12 июня предпраздничное), 2025-06-12 to 2025-06-13 (12 июня).

## Resources

| Resource | Group | Rate | Cost per use |
| --- | --- | --- | --- |
| Ведущий программист | Программирование | 10 | 100 |
| Программист#1 | Программирование | 7 | 50 |
| Программист#2 | Программирование | 7 | 50 |
| Программист#3 | Программирование | 7 | 50 |
| Прогаммист#4 | Программирование | 7 | 50 |
| Системный аналитик | Анализ | 20 | 300 |
| Художник-дизайнер | Дизайн | 8 | 70 |
| Технический писатель | Документация | 5 | 20 |
| Web-дизайнер | Internet | 7 |  |
| 3D аниматор | Дизайн | 8 | 70 |
| Мультимедиа-корреспондент | М-медиа | 3 | 20 |
| Наборщик данных#1 | Ввод данных | 2 | 10 |
| Наборщик данных#2 | Ввод данных | 2 | 10 |
| Наборщик данных#3 | Ввод данных | 2 | 10 |
| Наборщик данных#4 | Ввод данных | 2 | 10 |
| Наборщик данных#5 | Ввод данных | 2 | 10 |
| Дополнительный сервер | Аренда | 2 |  |
| Наборщик данных#6 | Ввод данных | 2 | 10 |
| Наборщик данных#7 | Ввод данных | 2 | 10 |
| Наборщик данных#8 | Ввод данных | 2 | 10 |
| Наборщик данных#9 | Ввод данных | 2 | 10 |
| Наборщик данных#10 | Ввод данных | 2 | 10 |
| Наборщик данных#11 | Ввод данных | 2 | 10 |
| Наборщик данных#12 | Ввод данных | 2 | 10 |
| Наборщик данных#13 | Ввод данных | 2 | 10 |

## Schedule

| ID | WBS | Task | Type | Duration | Start | Finish | Predecessors | Complete | Remaining | Baseline start | Baseline finish | Baseline duration | Total slack | Free slack | Resources | Work | Actual work | Cost | Baseline cost | Actual cost |
| --- | --- | --- | --- | --- | --- | --- | --- | --- | --- | --- | --- | --- | --- | --- | --- | --- | --- | --- | --- | --- |
| 1 | 1 | Начало проекта | milestone, manual | 0d | 2025-03-03 09:00 A | 2025-03-03 09:00 A |  | 100% |  | 2025-03-03 09:00 | 2025-03-03 09:00 | 0d |  |  |  |  |  |  |  |  |
| 2 | 2 | **Создание интерфейса** |  | 92.69d | 2025-03-03 09:00 A | 2025-07-18 08:33 | 1 | 88% | 10.91d | 2025-03-03 09:00 | 2025-07-03 16:35 | 82.57d | 0d | 0.11d |  | 512h | 320h | 5,314 | 5,314 | 3,650 |
| 3 | 2.1 | **Разработка дизайна интерфейса** |  | 30.62d | 2025-03-03 09:00 A | 2025-04-14 16:00 A |  | 100% |  | 2025-03-03 09:00 | 2025-04-07 16:00 | 25.62d |  |  |  | 320h | 320h | 2,770 | 2,770 | 2,770 |
| 4 | 2.1.1 | Разработка 2D графических элементов |  | 3w | 2025-03-03 09:00 A | 2025-03-31 14:00 A |  | 100% |  | 2025-03-03 09:00 | 2025-03-24 14:00 | 3w |  |  | Художник-дизайнер | 120h | 120h | 1,030 | 1,030 | 1,030 |
| 5 | 2.1.2 | Разработка 3D графических элементов |  | 2w | 2025-03-03 09:00 A | 2025-03-17 12:00 A | 4SS | 100% |  | 2025-03-03 09:00 | 2025-03-17 12:00 | 2w |  |  | 3D аниматор | 80h | 80h | 710 | 710 | 710 |
| 6 | 2.1.3 | Создание заставки |  | 4w | 2025-03-17 13:00 A | 2025-04-14 16:00 A | 5 | 100% |  | 2025-03-17 13:00 | 2025-04-07 16:00 | 3w |  |  | 3D аниматор | 120h | 120h | 1,030 | 1,030 | 1,030 |
| 7 | 2.2 | Программирование интерфейса |  | 1.2w | 2025-07-10 08:33 | 2025-07-18 08:33 | 3, 12 |  |  | 2025-06-25 16:35 | 2025-07-03 16:35 | 1.2w | 0d |  | Прогаммист#4; Программист#3; Программист#1; Программист#2 | 192h |  | 1,544 | 1,544 |  |
| 8 | 3 | **Построение базы объектов** |  | 68.82d | 2025-03-24 15:00 A | 2025-07-07 14:34 |  | 42% | 40.06d | 2025-03-24 15:00 | 2025-07-23 13:01 | 80.63d | 33.97d |  | Дополнительный сервер | 5239.57h | 1722.05h | 15,212.12 | 15,723.65 | 7,204.17 |
| 9 | 3.1 | Анализ и построение структуры базы объектов |  | 2w | 2025-03-24 15:00 A | 2025-04-07 16:00 A |  | 100% |  | 2025-03-24 15:00 | 2025-04-07 16:00 | 2w |  |  | Системный аналитик | 80h | 80h | 1,900 | 1,900 | 1,900 |
| 10 | 3.2 | Программирование средств обработки базы объектов |  | 3.13w | 2025-04-07 16:00 A | 2025-05-13 09:01 | 9 | 65% | 1.09w | 2025-04-07 16:00 | 2025-04-22 11:01 | 2.1w | 0d |  | Прогаммист#4; Программист#3; Программист#2; Программист#1; Ведущий программист | 240h | 196.34h | 2,169.61 | 2,169.61 | 1,856.06 |
| 11 | 3.3 | Наполнение базы объектов |  | 9.61w | 2025-04-22 11:01 A | 2025-07-07 14:34 | 10 | 22% | 7.49w | 2025-04-22 11:01 | 2025-07-23 13:01 | 12w | 33.97d |  | Наборщик данных#1; Наборщик данных#2; Наборщик данных#3; Наборщик данных#4; Наборщик данных#5; Наборщик данных#6; Наборщик данных#7 | 2400h | 392.89h | 4,869.99 | 4,850 | 835.78 |
| 12 | 4 | **Создание ядра GIS** |  | 86.69d | 2025-03-03 09:00 A | 2025-07-10 08:33 |  | 41% | 51.46d | 2025-03-03 09:00 | 2025-06-25 16:35 | 76.57d | 0d |  |  | 1947.77h | 734.37h | 18,734.59 | 19,034.59 | 8,707.03 |
| 13 | 4.1 | Анализ и проектирование ядра |  | 3.08w | 2025-03-03 09:00 A | 2025-03-24 14:00 A |  | 100% |  | 2025-03-03 09:00 | 2025-03-24 14:00 | 3.08w |  |  | Системный аналитик; Ведущий программист | 240h | 240h | 4,000 | 4,000 | 4,000 |
| 14 | 4.2 | Создание модели ядра |  | 2.02w | 2025-03-24 14:00 A | 2025-04-07 14:49 A | 13 | 100% |  | 2025-03-24 14:00 | 2025-04-07 14:49 | 2.02w |  |  | Ведущий программист; Программист#1; Программист#2; Прогаммист#4; Программист#3 | 400h | 400h | 3,336.46 | 3,336.46 | 3,336.46 |
| 15 | 4.3 | Тестирование модели ядра |  | 0.5w | 2025-04-07 14:49 A | 2025-04-10 09:49 A | 14 | 100% |  | 2025-04-07 14:49 | 2025-04-10 09:49 | 0.5w |  |  | Программист#1 | 20h | 20h | 190 | 490 | 190 |
| 16 | 4.4 | Создание рабочей версии ядра |  | 10.46w | 2025-04-14 13:51 A | 2025-07-10 08:33 | 15 | 9% | 9.53w | 2025-04-14 13:51 | 2025-06-25 16:35 | 9.24w | 0d | 0.11d | Ведущий программист; Программист#1; Программист#2; Прогаммист#4 | 1287.77h | 74.37h | 10,208.13 | 10,208.13 | 770.57 |
| 17 | 5 | Создание мультимедиа – наполнения |  | 6w | 2025-04-07 16:00 A | 2025-05-26 14:00 | 3 | 69% | 1.88w | 2025-04-07 16:00 | 2025-05-26 14:00 | 6w | 61.92d | 59.75d | Мультимедиа-корреспондент | 240h | 165h | 740 | 740 | 515 |
| 18 | 6 | Создание справочной системы |  | 2w | 2025-07-29 11:33 | 2025-08-12 13:33 | 7 |  |  | 2025-07-15 10:35 | 2025-07-29 11:35 | 2w | 8.1d | 13.18d | Технический писатель | 80h |  | 420 | 420 |  |
| 19 | 7 | **Создание руководства пользователя** |  | 17.25d | 2025-07-04 08:33 | 2025-07-29 10:33 | 7FS-10d |  |  | 2025-06-19 16:35 | 2025-07-15 09:35 | 17.25d | 0d | 0.11d |  | 160h |  | 1,010 | 1,010 |  |
| 20 | 7.1 | Разработка дизайна руководства |  | 1w | 2025-07-04 08:33 | 2025-07-11 08:33 |  |  |  | 2025-06-19 16:35 | 2025-06-26 16:35 | 1w | 0d |  | Художник-дизайнер | 40h |  | 390 | 390 |  |
| 21 | 7.2 | Написание руководства пользователя |  | 3w | 2025-07-08 08:33 | 2025-07-29 10:33 | 20SS+2d |  |  | 2025-06-23 16:35 | 2025-07-15 09:35 | 3w | 0d |  | Технический писатель | 120h |  | 620 | 620 |  |
| 22 | 8 | **Создание web – сайта и поддержка** |  | 23.38d | 2025-07-08 08:33 | 2025-08-08 11:33 |  |  |  | 2025-06-23 16:35 | 2025-07-25 10:35 | 23.38d | 0d |  |  | 248h |  | 1,956 | 1,956 |  |
| 23 | 8.1 | Разработка структуры сайта |  | 1d | 2025-07-08 08:33 | 2025-07-09 08:33 | 21SS |  |  | 2025-06-23 16:35 | 2025-06-24 16:35 | 1d | 0d |  | Web-дизайнер | 8h |  | 56 | 56 |  |
| 24 | 8.2 | Разработка дизайна сайта |  | 1.43w | 2025-07-09 08:33 | 2025-07-18 09:33 | 23 |  |  | 2025-06-24 16:35 | 2025-07-04 08:35 | 1.43w | 0d |  | Web-дизайнер; Художник-дизайнер; 3D аниматор | 120h |  | 1,060 | 1,060 |  |
| 25 | 8.3 | Наполнение сайта |  | 3w | 2025-07-18 09:33 | 2025-08-08 11:33 | 24 |  |  | 2025-07-04 08:35 | 2025-07-25 10:35 | 3w | 0d | 0.11d | Web-дизайнер | 120h |  | 840 | 840 |  |
| 26 | 9 | Тестирование сайта |  | 3.05w | 2025-08-01 11:33 | 2025-08-22 14:22 | 22FS-1w |  |  | 2025-07-18 10:35 | 2025-08-05 11:53 | 2.43w | 0d |  | Ведущий программист; Программист#1; Программист#2; Программист#3 | 480h |  | 3,969.44 | 3,945.85 |  |
| 27 | 10 | Сдача сайта в эксплуатацию | milestone | 0d | 2025-08-22 14:22 | 2025-08-22 14:22 | 26 |  |  | 2025-08-05 11:53 | 2025-08-05 11:53 | 0d | 0d | 0.11d |  |  |  |  |  |  |

| ID | WBS | Task | Duration | Start | Finish | Complete | Remaining | Baseline start | Baseline finish | Baseline duration | Total slack | Free slack | Constraint | Resources | Work | Actual work | Cost | Baseline cost | Actual cost |
| --- | --- | --- | --- | --- | --- | --- | --- | --- | --- | --- | --- | --- | --- | --- | --- | --- | --- | --- | --- |
| 28 | 11 | **Еженедельное собрание** | 113.88d | 2025-03-05 09:00 A | 2025-08-20 10:00 | 40% | 68.33d | 2025-03-05 09:00 | 2025-08-06 10:00 | 103.88d | 2.42d | 0d |  |  | 174h | 69h | 1,517 | 1,403 | 602 |
| 29 | 11.1 | Еженедельное собрание 1 | 1h | 2025-03-05 09:00 A | 2025-03-05 10:00 A | 100% |  | 2025-03-05 09:00 | 2025-03-05 10:00 | 1h |  |  | start no earlier than 2025-03-05 09:00 | 3D аниматор; Web-дизайнер; Ведущий программист; Мультимедиа-корреспондент; Системный аналитик; Технический писатель; Художник-дизайнер | 7h | 7h | 61 | 61 | 61 |
| 30 | 11.2 | Еженедельное собрание 2 | 1h | 2025-03-12 09:00 A | 2025-03-12 10:00 A | 100% |  | 2025-03-12 09:00 | 2025-03-12 10:00 | 1h |  |  | start no earlier than 2025-03-12 09:00 | 3D аниматор; Web-дизайнер; Ведущий программист; Мультимедиа-корреспондент; Системный аналитик; Технический писатель; Художник-дизайнер | 7h | 7h | 61 | 61 | 61 |
| 31 | 11.3 | Еженедельное собрание 3 | 1h | 2025-03-19 09:00 A | 2025-03-19 10:00 A | 100% |  | 2025-03-19 09:00 | 2025-03-19 10:00 | 1h |  |  | start no earlier than 2025-03-19 09:00 | 3D аниматор; Web-дизайнер; Ведущий программист; Мультимедиа-корреспондент; Системный аналитик; Технический писатель; Художник-дизайнер | 6h | 6h | 53 | 61 | 53 |
| 32 | 11.4 | Еженедельное собрание 4 | 1h | 2025-03-26 09:00 A | 2025-03-26 10:00 A | 100% |  | 2025-03-26 09:00 | 2025-03-26 10:00 | 1h |  |  | start no earlier than 2025-03-26 09:00 | 3D аниматор; Web-дизайнер; Ведущий программист; Мультимедиа-корреспондент; Системный аналитик; Технический писатель; Художник-дизайнер | 7h | 7h | 61 | 61 | 61 |
| 33 | 11.5 | Еженедельное собрание 5 | 1h | 2025-04-02 09:00 A | 2025-04-02 10:00 A | 100% |  | 2025-04-02 09:00 | 2025-04-02 10:00 | 1h |  |  | start no earlier than 2025-04-02 09:00 | 3D аниматор; Web-дизайнер; Ведущий программист; Мультимедиа-корреспондент; Системный аналитик; Технический писатель; Художник-дизайнер | 7h | 7h | 61 | 61 | 61 |
| 34 | 11.6 | Еженедельное собрание 6 | 1h | 2025-04-09 09:00 A | 2025-04-09 10:00 A | 100% |  | 2025-04-09 09:00 | 2025-04-09 10:00 | 1h |  |  | start no earlier than 2025-04-09 09:00 | 3D аниматор; Web-дизайнер; Ведущий программист; Мультимедиа-корреспондент; Системный аналитик; Технический писатель; Художник-дизайнер | 7h | 7h | 61 | 61 | 61 |
| 35 | 11.7 | Еженедельное собрание 7 | 1h | 2025-04-16 09:00 A | 2025-04-16 10:00 A | 100% |  | 2025-04-16 09:00 | 2025-04-16 10:00 | 1h |  |  | start no earlier than 2025-04-16 09:00 | 3D аниматор; Web-дизайнер; Ведущий программист; Мультимедиа-корреспондент; Системный аналитик; Технический писатель; Художник-дизайнер | 7h | 7h | 61 | 61 | 61 |
| 36 | 11.8 | Еженедельное собрание 8 | 1h | 2025-04-23 09:00 A | 2025-04-23 10:00 A | 100% |  | 2025-04-23 09:00 | 2025-04-23 10:00 | 1h |  |  | start no earlier than 2025-04-23 09:00 | 3D аниматор; Web-дизайнер; Ведущий программист; Мультимедиа-корреспондент; Системный аналитик; Технический писатель; Художник-дизайнер | 7h | 7h | 61 | 61 | 61 |
| 37 | 11.9 | Еженедельное собрание 9 | 1h | 2025-04-30 09:00 A | 2025-04-30 10:00 A | 100% |  | 2025-04-30 09:00 | 2025-04-30 10:00 | 1h |  |  | start no earlier than 2025-04-30 09:00 | 3D аниматор; Web-дизайнер; Ведущий программист; Мультимедиа-корреспондент; Системный аналитик; Технический писатель; Художник-дизайнер | 7h | 7h | 61 | 61 | 61 |
| 38 | 11.10 | Еженедельное собрание 10 | 1h | 2025-05-07 09:00 A | 2025-05-07 10:00 A | 100% |  | 2025-05-07 09:00 | 2025-05-07 10:00 | 1h |  |  | start no earlier than 2025-05-07 09:00 | 3D аниматор; Web-дизайнер; Ведущий программист; Мультимедиа-корреспондент; Системный аналитик; Технический писатель; Художник-дизайнер | 7h | 7h | 61 | 61 | 61 |
| 39 | 11.11 | Еженедельное собрание 11 | 1h | 2025-05-14 09:00 | 2025-05-14 10:00 |  |  | 2025-05-14 09:00 | 2025-05-14 10:00 | 1h | 70.3d | 67.88d | start no earlier than 2025-05-14 09:00 | 3D аниматор; Web-дизайнер; Ведущий программист; Мультимедиа-корреспондент; Системный аналитик; Технический писатель; Художник-дизайнер | 7h |  | 61 | 61 |  |
| 40 | 11.12 | Еженедельное собрание 12 | 1h | 2025-05-21 09:00 | 2025-05-21 10:00 |  |  | 2025-05-21 09:00 | 2025-05-21 10:00 | 1h | 65.3d | 62.88d | start no earlier than 2025-05-21 09:00 | 3D аниматор; Web-дизайнер; Ведущий программист; Мультимедиа-корреспондент; Системный аналитик; Технический писатель; Художник-дизайнер | 7h |  | 61 | 61 |  |
| 41 | 11.13 | Еженедельное собрание 13 | 1h | 2025-05-28 09:00 | 2025-05-28 10:00 |  |  | 2025-05-28 09:00 | 2025-05-28 10:00 | 1h | 60.3d | 57.88d | start no earlier than 2025-05-28 09:00 | 3D аниматор; Web-дизайнер; Ведущий программист; Мультимедиа-корреспондент; Системный аналитик; Технический писатель; Художник-дизайнер | 7h |  | 61 | 61 |  |
| 42 | 11.14 | Еженедельное собрание 14 | 1h | 2025-06-04 09:00 | 2025-06-04 10:00 |  |  | 2025-06-04 09:00 | 2025-06-04 10:00 | 1h | 55.3d | 52.88d | start no earlier than 2025-06-04 09:00 | 3D аниматор; Web-дизайнер; Ведущий программист; Мультимедиа-корреспондент; Системный аналитик; Технический писатель; Художник-дизайнер | 7h |  | 61 | 61 |  |
| 43 | 11.15 | Еженедельное собрание 15 | 1h | 2025-06-11 09:00 | 2025-06-11 10:00 |  |  | 2025-06-11 09:00 | 2025-06-11 10:00 | 1h | 50.42d | 48d | start no earlier than 2025-06-11 09:00 | 3D аниматор; Web-дизайнер; Ведущий программист; Мультимедиа-корреспондент; Системный аналитик; Технический писатель; Художник-дизайнер | 7h |  | 61 | 61 |  |
| 44 | 11.16 | Еженедельное собрание 16 | 1h | 2025-06-18 09:00 | 2025-06-18 10:00 |  |  | 2025-06-18 09:00 | 2025-06-18 10:00 | 1h | 47.42d | 45d | start no earlier than 2025-06-18 09:00 | 3D аниматор; Web-дизайнер; Ведущий программист; Мультимедиа-корреспондент; Системный аналитик; Технический писатель; Художник-дизайнер | 7h |  | 61 | 61 |  |
| 45 | 11.17 | Еженедельное собрание 17 | 1h | 2025-06-25 09:00 | 2025-06-25 10:00 |  |  | 2025-06-25 09:00 | 2025-06-25 10:00 | 1h | 42.42d | 40d | start no earlier than 2025-06-25 09:00 | 3D аниматор; Web-дизайнер; Ведущий программист; Мультимедиа-корреспондент; Системный аналитик; Технический писатель; Художник-дизайнер | 7h |  | 61 | 61 |  |
| 46 | 11.18 | Еженедельное собрание 18 | 1h | 2025-07-02 09:00 | 2025-07-02 10:00 |  |  | 2025-07-02 09:00 | 2025-07-02 10:00 | 1h | 37.42d | 35d | start no earlier than 2025-07-02 09:00 | 3D аниматор; Web-дизайнер; Ведущий программист; Мультимедиа-корреспондент; Системный аналитик; Технический писатель; Художник-дизайнер | 7h |  | 61 | 61 |  |
| 47 | 11.19 | Еженедельное собрание 19 | 1h | 2025-07-09 09:00 | 2025-07-09 10:00 |  |  | 2025-07-09 09:00 | 2025-07-09 10:00 | 1h | 32.42d | 30d | start no earlier than 2025-07-09 09:00 | 3D аниматор; Web-дизайнер; Ведущий программист; Мультимедиа-корреспондент; Системный аналитик; Технический писатель; Художник-дизайнер | 7h |  | 61 | 61 |  |
| 48 | 11.20 | Еженедельное собрание 20 | 1h | 2025-07-16 09:00 | 2025-07-16 10:00 |  |  | 2025-07-16 09:00 | 2025-07-16 10:00 | 1h | 27.42d | 25d | start no earlier than 2025-07-16 09:00 | 3D аниматор; Web-дизайнер; Ведущий программист; Мультимедиа-корреспондент; Системный аналитик; Технический писатель; Художник-дизайнер | 7h |  | 61 | 61 |  |
| 49 | 11.21 | Еженедельное собрание 21 | 1h | 2025-07-23 09:00 | 2025-07-23 10:00 |  |  | 2025-07-23 09:00 | 2025-07-23 10:00 | 1h | 22.42d | 20d | start no earlier than 2025-07-23 09:00 | 3D аниматор; Web-дизайнер; Ведущий программист; Мультимедиа-корреспондент; Системный аналитик; Технический писатель; Художник-дизайнер | 7h |  | 61 | 61 |  |
| 50 | 11.22 | Еженедельное собрание 22 | 1h | 2025-07-30 09:00 | 2025-07-30 10:00 |  |  | 2025-07-30 09:00 | 2025-07-30 10:00 | 1h | 17.42d | 15d | start no earlier than 2025-07-30 09:00 | 3D аниматор; Web-дизайнер; Ведущий программист; Мультимедиа-корреспондент; Системный аналитик; Технический писатель; Художник-дизайнер | 7h |  | 61 | 61 |  |
| 51 | 11.23 | Еженедельное собрание 23 | 1h | 2025-08-06 09:00 | 2025-08-06 10:00 |  |  | 2025-08-06 09:00 | 2025-08-06 10:00 | 1h | 12.42d | 10d | start no earlier than 2025-08-06 09:00 | 3D аниматор; Web-дизайнер; Ведущий программист; Мультимедиа-корреспондент; Системный аналитик; Технический писатель; Художник-дизайнер | 7h |  | 61 | 61 |  |
| 52 | 11.24 | Еженедельное собрание 24 | 1h | 2025-08-13 09:00 | 2025-08-13 10:00 |  |  |  |  |  | 7.42d | 5d | start no earlier than 2025-08-13 09:00 | 3D аниматор; Web-дизайнер; Ведущий программист; Мультимедиа-корреспондент; Системный аналитик; Технический писатель; Художник-дизайнер | 7h |  | 61 |  |  |
| 53 | 11.25 | Еженедельное собрание 25 | 1h | 2025-08-20 09:00 | 2025-08-20 10:00 |  |  |  |  |  | 2.42d | 0d | start no earlier than 2025-08-20 09:00 | 3D аниматор; Web-дизайнер; Ведущий программист; Мультимедиа-корреспондент; Системный аналитик; Технический писатель; Художник-дизайнер | 7h |  | 61 |  |  |
