# Создание карты города

Schedule from MS Project, 2025-03-03 to 2025-08-25, status date 2025-05-15, costs in ₽, A marks actual dates.
Команда разработчиков из 16 человек занимается созданием карты города на основе собственного модуля отображения. Проект должен быть завершен в течение 6 месяцев. Бюджет проекта: 50000 рублей.

## Calendars

- Стандартный: Mon-Fri 09:00-13:00, 14:00-18:00; Sat-Sun off. Exceptions (off unless hours are given): 2025-03-07 09:00-13:00, 14:00-17:00 (Сокращенный рабочий день перед 8 марта), 2025-04-30 09:00-13:00, 14:00-17:00 (Сокращенный рабочий день перед 1 мая), 2025-05-01 (Праздник Весны и Труда (+ перенос с 04.01.25)), 2025-05-02 (Перенос с 04.01.25), 2025-05-08 (23 февраля (перенос)), 2025-05-09 to 2025-05-11 (День Победы), 2025-06-11 09:00-13:00, 14:00-17:00 (Сокращенный рабочий день перед 12 июня), 2025-06-12 (День России), 2025-06-13 (8 марта (перенос)).

## Resources

| Resource | Group | Rate | Cost per use |
| --- | --- | --- | --- |
| Ведущий программист | Программирование | 10 | 100 |
| Программист#1 | Программирование | 7 | 50 |
| Программист#2 | Программирование | 7 | 50 |
| Программист#3 | Программирование | 7 | 50 |
| Программист#4 | Программирование | 7 | 50 |
| Системный аналитик | Анализ | 20 | 300 |
| Художник-дизайнер | Дизайн | 8 | 70 |
| Технический писатель | Документация | 5 | 20 |
| Web-дизайнер | Internet | 7 | 50 |
| 3D аниматор | Дизайн | 8.8 | 70 |
| Мультимедиа-корреспондент | М-медиа | 3 | 20 |
| Наборщик данных#1 | Ввод данных | 2 | 10 |
| Наборщик данных#2 | Ввод данных | 2 | 10 |
| Наборщик данных#3 | Ввод данных | 2 | 10 |
| Наборщик данных#4 | Ввод данных | 2 | 10 |
| Наборщик данных#5 | Ввод данных | 2 | 10 |
| Аренда сервера | Аренда | 2 |  |

## Schedule

| ID | WBS | Task | Type | Duration | Start | Finish | Predecessors | Complete | Remaining | Baseline start | Baseline finish | Baseline duration | Total slack | Free slack | Resources | Work | Actual work | Cost | Baseline cost | Actual cost |
| --- | --- | --- | --- | --- | --- | --- | --- | --- | --- | --- | --- | --- | --- | --- | --- | --- | --- | --- | --- | --- |
| 1 | 1 | Начало проекта | milestone | 0w | 2025-03-03 09:00 | 2025-03-03 09:00 |  |  |  | 2025-03-03 09:00 | 2025-03-03 09:00 | 0w | 57.3d | 0d |  |  |  |  |  |  |
| 2 | 2 | **Создание интерфейса** |  | 95.98d | 2025-03-03 09:00 | 2025-07-23 11:48 | 1 |  |  | 2025-03-03 09:00 | 2025-07-16 11:48 | 90.98d | 0d | 2.76d |  | 560h |  | 5,779.6 | 5,650 |  |
| 3 | 2.1 | **Разработка дизайна интерфейса** |  | 30.62d | 2025-03-03 09:00 | 2025-04-14 16:00 |  |  |  | 2025-03-03 09:00 | 2025-04-07 16:00 | 25.62d | 57.3d | 0d |  | 320h |  | 2,899.6 | 2,770 |  |
| 4 | 2.1.1 | Разработка 2D графических элементов |  | 3w | 2025-03-03 09:00 | 2025-03-24 13:00 |  |  |  | 2025-03-03 09:00 | 2025-03-24 13:00 | 3w | 57.3d | 0d | Художник-дизайнер | 120h |  | 1,030 | 1,030 |  |
| 5 | 2.1.2 | Разработка 3D графических элементов |  | 2w | 2025-03-03 09:00 | 2025-03-24 12:00 | 4SS |  |  | 2025-03-03 09:00 | 2025-03-17 12:00 | 2w | 57.3d | 0d | 3D аниматор | 80h |  | 743.6 | 710 |  |
| 6 | 2.1.3 | Создание заставки |  | 3w | 2025-03-24 12:00 | 2025-04-14 16:00 | 5 |  |  | 2025-03-17 12:00 | 2025-04-07 16:00 | 3w | 57.3d | 50.88d | 3D аниматор | 120h |  | 1,126 | 1,030 |  |
| 7 | 2.2 | Программирование интерфейса |  | 1.5w | 2025-07-11 16:48 | 2025-07-23 11:48 | 3, 12 |  |  | 2025-07-04 16:48 | 2025-07-16 11:48 | 1.5w | 0d |  | Программист#3; Программист#4; Программист#1; Программист#2 | 240h |  | 1,880 | 1,880 |  |
| 8 | 3 | **Построение базы объектов** |  | 91.5d | 2025-03-26 09:00 A | 2025-08-08 16:00 |  | 14% | 78.58d | 2025-03-24 14:00 | 2025-08-08 11:00 | 92.5d | 10.42d |  | Аренда сервера | 5967h | 697.27h | 16,124 | 16,200 | 3,114.53 |
| 9 | 3.1 | Анализ и построение структуры базы объектов |  | 2w | 2025-03-26 09:00 A | 2025-04-14 16:00 |  |  | 2w | 2025-03-24 14:00 | 2025-04-07 16:00 | 2w | 14.75d | 0d | Системный аналитик | 80h |  | 1,900 | 1,900 | 300 |
| 10 | 3.2 | Программирование средств обработки базы объектов |  | 3w | 2025-04-09 12:00 A | 2025-05-14 15:00 | 9 | 80% | 0.6w | 2025-04-07 16:00 | 2025-05-14 10:00 | 3w | 10.42d | 0d | Программист#3; Программист#4; Программист#1; Программист#2 | 240h | 216h | 1,880 | 1,880 | 1,712 |
| 11 | 3.3 | Наполнение базы объектов |  | 12w | 2025-05-14 15:00 | 2025-08-08 16:00 | 10 |  |  | 2025-05-14 10:00 | 2025-08-08 11:00 | 12w | 10.42d |  | Наборщик данных#1; Наборщик данных#2; Наборщик данных#3; Наборщик данных#4; Наборщик данных#5 | 2400h |  | 4,850 | 4,850 |  |
| 12 | 4 | **Создание ядра GIS** |  | 88.48d | 2025-03-03 09:00 | 2025-07-11 16:48 |  |  |  | 2025-03-03 09:00 | 2025-07-04 16:48 | 83.48d | 0d |  |  | 1880h |  | 18,293.44 | 18,293.44 |  |
| 13 | 4.1 | Анализ и проектирование ядра |  | 3w | 2025-03-03 09:00 | 2025-03-31 13:00 |  |  |  | 2025-03-03 09:00 | 2025-03-24 13:00 | 3w | 0d |  | Системный аналитик; Ведущий программист | 240h |  | 4,000 | 4,000 |  |
| 14 | 4.2 | Создание модели ядра |  | 6.03w | 2025-03-31 14:00 | 2025-05-21 10:00 | 13 |  |  | 2025-03-24 14:00 | 2025-04-29 10:00 | 5.12w | 0d |  | Ведущий программист; Программист#1 | 400h |  | 3,550 | 3,550 |  |
| 15 | 4.3 | Тестирование модели ядра |  | 1w | 2025-05-21 10:00 | 2025-05-28 10:00 | 14 |  |  | 2025-05-14 10:00 | 2025-05-21 10:00 | 1w | 0d |  | Программист#1 | 40h |  | 330 | 330 |  |
| 16 | 4.4 | Создание рабочей версии ядра |  | 6.12w | 2025-05-28 10:00 | 2025-07-11 16:48 | 15 |  |  | 2025-05-21 10:00 | 2025-07-04 16:48 | 6.12w | 0d | 2.76d | Ведущий программист; Программист#1; Программист#2; Программист#3; Программист#4 | 1200h |  | 9,413.44 | 9,413.44 |  |
| 17 | 5 | Создание мультимедиа-наполнения |  | 6w | 2025-04-14 16:00 | 2025-06-02 16:00 | 3 |  |  | 2025-04-07 16:00 | 2025-05-26 16:00 | 6w | 57.3d | 50.88d | Мультимедиа-корреспондент | 240h |  | 740 | 740 |  |
| 18 | 6 | Создание справочной системы |  | 2w | 2025-08-01 15:48 | 2025-08-15 17:48 | 7 |  |  | 2025-07-25 15:48 | 2025-08-08 17:48 | 2w | 5.19d | 12.95d | Технический писатель | 80h |  | 420 | 420 |  |
| 19 | 7 | **Создание руководства пользователя** |  | 17.38d | 2025-07-09 11:48 | 2025-08-01 15:48 | 7FS-10d |  |  | 2025-07-02 11:48 | 2025-07-25 15:48 | 17.38d | 0d | 2.76d |  | 160h |  | 1,010 | 1,010 |  |
| 20 | 7.1 | Разработка дизайна руководства |  | 1w | 2025-07-09 11:48 | 2025-07-16 12:48 |  |  |  | 2025-07-02 11:48 | 2025-07-09 12:48 | 1w | 0d |  | Художник-дизайнер | 40h |  | 390 | 390 |  |
| 21 | 7.2 | Написание руководства пользователя |  | 3w | 2025-07-11 11:48 | 2025-08-01 15:48 | 20SS+2d |  |  | 2025-07-04 11:48 | 2025-07-25 15:48 | 3w | 0d |  | Технический писатель | 120h |  | 620 | 620 |  |
| 22 | 8 | **Создание web-сайта и поддержка** |  | 23.62d | 2025-07-11 11:48 | 2025-08-13 17:48 |  |  |  | 2025-07-04 11:48 | 2025-08-06 17:48 | 23.62d | 0d |  |  | 248h |  | 2,138 | 2,106 |  |
| 23 | 8.1 | Разработка структуры сайта |  | 1d | 2025-07-11 11:48 | 2025-07-14 11:48 | 21SS |  |  | 2025-07-04 11:48 | 2025-07-07 11:48 | 1d | 0d |  | Web-дизайнер | 8h |  | 106 | 106 |  |
| 24 | 8.2 | Разработка дизайна сайта |  | 1.4w | 2025-07-14 11:48 | 2025-07-23 14:48 | 23 |  |  | 2025-07-07 11:48 | 2025-07-16 14:48 | 1.4w | 0d |  | Web-дизайнер; 3D аниматор; Художник-дизайнер | 120h |  | 1,142 | 1,110 |  |
| 25 | 8.3 | Наполнение сайта |  | 3w | 2025-07-23 14:48 | 2025-08-13 17:48 | 24 |  |  | 2025-07-16 14:48 | 2025-08-06 17:48 | 3w | 0d | 2.76d | Web-дизайнер | 120h |  | 890 | 890 |  |
| 26 | 9 | Тестирование сайта |  | 2.44w | 2025-08-06 17:48 | 2025-08-25 10:22 | 22FS-1w |  |  | 2025-07-30 17:48 | 2025-08-18 10:22 | 2.44w | 0d |  | Ведущий программист; Программист#1; Программист#2; Программист#3; Программист#4 | 480h |  | 3,945.49 | 3,945.49 |  |
| 27 | 10 | Сдача сайта в эксплуатацию | milestone | 0w | 2025-08-25 10:22 | 2025-08-25 10:22 | 26 |  |  | 2025-08-18 10:22 | 2025-08-18 10:22 | 0w | 0d | 2.76d |  |  |  |  |  |  |

| ID | WBS | Task | Duration | Start | Finish | Baseline start | Baseline finish | Baseline duration | Total slack | Free slack | Constraint | Resources | Work | Cost | Baseline cost |
| --- | --- | --- | --- | --- | --- | --- | --- | --- | --- | --- | --- | --- | --- | --- | --- |
| 28 | 11 | **Совещание** | 108.75d | 2025-03-05 10:00 | 2025-08-13 11:00 | 2025-03-05 10:00 | 2025-08-13 11:00 | 108.75d | 7.92d | 0d |  |  | 167h | 1,473.6 | 1,464 |
| 29 | 11.1 | Совещание 1 | 1h | 2025-03-05 10:00 | 2025-03-05 11:00 | 2025-03-05 10:00 | 2025-03-05 11:00 | 1h | 116.55d | 108.62d | start no earlier than 2025-03-05 10:00 | 3D аниматор; Web-дизайнер; Ведущий программист; Мультимедиа-корреспондент; Системный аналитик; Технический писатель; Художник-дизайнер | 7h | 61 | 61 |
| 30 | 11.2 | Совещание 2 | 1h | 2025-03-12 10:00 | 2025-03-12 11:00 | 2025-03-12 10:00 | 2025-03-12 11:00 | 1h | 111.67d | 103.75d | start no earlier than 2025-03-12 10:00 | 3D аниматор; Web-дизайнер; Ведущий программист; Мультимедиа-корреспондент; Системный аналитик; Технический писатель; Художник-дизайнер | 6h | 53 | 61 |
| 31 | 11.3 | Совещание 3 | 1h | 2025-03-19 10:00 | 2025-03-19 11:00 | 2025-03-19 10:00 | 2025-03-19 11:00 | 1h | 106.67d | 98.75d | start no earlier than 2025-03-19 10:00 | 3D аниматор; Web-дизайнер; Ведущий программист; Мультимедиа-корреспондент; Системный аналитик; Технический писатель; Художник-дизайнер | 7h | 61.8 | 61 |
| 32 | 11.4 | Совещание 4 | 1h | 2025-03-26 10:00 | 2025-03-26 11:00 | 2025-03-26 10:00 | 2025-03-26 11:00 | 1h | 101.67d | 93.75d | start no earlier than 2025-03-26 10:00 | 3D аниматор; Web-дизайнер; Ведущий программист; Мультимедиа-корреспондент; Системный аналитик; Технический писатель; Художник-дизайнер | 7h | 61.8 | 61 |
| 33 | 11.5 | Совещание 5 | 1h | 2025-04-02 10:00 | 2025-04-02 11:00 | 2025-04-02 10:00 | 2025-04-02 11:00 | 1h | 96.67d | 88.75d | start no earlier than 2025-04-02 10:00 | 3D аниматор; Web-дизайнер; Ведущий программист; Мультимедиа-корреспондент; Системный аналитик; Технический писатель; Художник-дизайнер | 7h | 61.8 | 61 |
| 34 | 11.6 | Совещание 6 | 1h | 2025-04-09 10:00 | 2025-04-09 11:00 | 2025-04-09 10:00 | 2025-04-09 11:00 | 1h | 91.67d | 83.75d | start no earlier than 2025-04-09 10:00 | 3D аниматор; Web-дизайнер; Ведущий программист; Мультимедиа-корреспондент; Системный аналитик; Технический писатель; Художник-дизайнер | 7h | 61.8 | 61 |
| 35 | 11.7 | Совещание 7 | 1h | 2025-04-16 10:00 | 2025-04-16 11:00 | 2025-04-16 10:00 | 2025-04-16 11:00 | 1h | 86.67d | 78.75d | start no earlier than 2025-04-16 10:00 | 3D аниматор; Web-дизайнер; Ведущий программист; Мультимедиа-корреспондент; Системный аналитик; Технический писатель; Художник-дизайнер | 7h | 61.8 | 61 |
| 36 | 11.8 | Совещание 8 | 1h | 2025-04-23 10:00 | 2025-04-23 11:00 | 2025-04-23 10:00 | 2025-04-23 11:00 | 1h | 81.67d | 73.75d | start no earlier than 2025-04-23 10:00 | 3D аниматор; Web-дизайнер; Ведущий программист; Мультимедиа-корреспондент; Системный аналитик; Технический писатель; Художник-дизайнер | 7h | 61.8 | 61 |
| 37 | 11.9 | Совещание 9 | 1h | 2025-04-30 10:00 | 2025-04-30 11:00 | 2025-04-30 10:00 | 2025-04-30 11:00 | 1h | 76.67d | 68.75d | start no earlier than 2025-04-30 10:00 | 3D аниматор; Web-дизайнер; Ведущий программист; Мультимедиа-корреспондент; Системный аналитик; Технический писатель; Художник-дизайнер | 7h | 61.8 | 61 |
| 38 | 11.10 | Совещание 10 | 1h | 2025-05-07 10:00 | 2025-05-07 11:00 | 2025-05-07 10:00 | 2025-05-07 11:00 | 1h | 73.8d | 65.88d | start no earlier than 2025-05-07 10:00 | 3D аниматор; Web-дизайнер; Ведущий программист; Мультимедиа-корреспондент; Системный аналитик; Технический писатель; Художник-дизайнер | 7h | 61.8 | 61 |
| 39 | 11.11 | Совещание 11 | 1h | 2025-05-14 10:00 | 2025-05-14 11:00 | 2025-05-14 10:00 | 2025-05-14 11:00 | 1h | 70.8d | 62.88d | start no earlier than 2025-05-14 10:00 | 3D аниматор; Web-дизайнер; Ведущий программист; Мультимедиа-корреспондент; Системный аналитик; Технический писатель; Художник-дизайнер | 7h | 61.8 | 61 |
| 40 | 11.12 | Совещание 12 | 1h | 2025-05-21 10:00 | 2025-05-21 11:00 | 2025-05-21 10:00 | 2025-05-21 11:00 | 1h | 65.8d | 57.88d | start no earlier than 2025-05-21 10:00 | 3D аниматор; Web-дизайнер; Ведущий программист; Мультимедиа-корреспондент; Системный аналитик; Технический писатель; Художник-дизайнер | 7h | 61.8 | 61 |
| 41 | 11.13 | Совещание 13 | 1h | 2025-05-28 10:00 | 2025-05-28 11:00 | 2025-05-28 10:00 | 2025-05-28 11:00 | 1h | 60.8d | 52.88d | start no earlier than 2025-05-28 10:00 | 3D аниматор; Web-дизайнер; Ведущий программист; Мультимедиа-корреспондент; Системный аналитик; Технический писатель; Художник-дизайнер | 7h | 61.8 | 61 |
| 42 | 11.14 | Совещание 14 | 1h | 2025-06-04 10:00 | 2025-06-04 11:00 | 2025-06-04 10:00 | 2025-06-04 11:00 | 1h | 55.8d | 47.88d | start no earlier than 2025-06-04 10:00 | 3D аниматор; Web-дизайнер; Ведущий программист; Мультимедиа-корреспондент; Системный аналитик; Технический писатель; Художник-дизайнер | 7h | 61.8 | 61 |
| 43 | 11.15 | Совещание 15 | 1h | 2025-06-11 10:00 | 2025-06-11 11:00 | 2025-06-11 10:00 | 2025-06-11 11:00 | 1h | 50.8d | 42.88d | start no earlier than 2025-06-11 10:00 | 3D аниматор; Web-дизайнер; Ведущий программист; Мультимедиа-корреспондент; Системный аналитик; Технический писатель; Художник-дизайнер | 7h | 61.8 | 61 |
| 44 | 11.16 | Совещание 16 | 1h | 2025-06-18 10:00 | 2025-06-18 11:00 | 2025-06-18 10:00 | 2025-06-18 11:00 | 1h | 47.92d | 40d | start no earlier than 2025-06-18 10:00 | 3D аниматор; Web-дизайнер; Ведущий программист; Мультимедиа-корреспондент; Системный аналитик; Технический писатель; Художник-дизайнер | 7h | 61.8 | 61 |
| 45 | 11.17 | Совещание 17 | 1h | 2025-06-25 10:00 | 2025-06-25 11:00 | 2025-06-25 10:00 | 2025-06-25 11:00 | 1h | 42.92d | 35d | start no earlier than 2025-06-25 10:00 | 3D аниматор; Web-дизайнер; Ведущий программист; Мультимедиа-корреспондент; Системный аналитик; Технический писатель; Художник-дизайнер | 7h | 61.8 | 61 |
| 46 | 11.18 | Совещание 18 | 1h | 2025-07-02 10:00 | 2025-07-02 11:00 | 2025-07-02 10:00 | 2025-07-02 11:00 | 1h | 37.92d | 30d | start no earlier than 2025-07-02 10:00 | 3D аниматор; Web-дизайнер; Ведущий программист; Мультимедиа-корреспондент; Системный аналитик; Технический писатель; Художник-дизайнер | 7h | 61.8 | 61 |
| 47 | 11.19 | Совещание 19 | 1h | 2025-07-09 10:00 | 2025-07-09 11:00 | 2025-07-09 10:00 | 2025-07-09 11:00 | 1h | 32.92d | 25d | start no earlier than 2025-07-09 10:00 | 3D аниматор; Web-дизайнер; Ведущий программист; Мультимедиа-корреспондент; Системный аналитик; Технический писатель; Художник-дизайнер | 7h | 61.8 | 61 |
| 48 | 11.20 | Совещание 20 | 1h | 2025-07-16 10:00 | 2025-07-16 11:00 | 2025-07-16 10:00 | 2025-07-16 11:00 | 1h | 27.92d | 20d | start no earlier than 2025-07-16 10:00 | 3D аниматор; Web-дизайнер; Ведущий программист; Мультимедиа-корреспондент; Системный аналитик; Технический писатель; Художник-дизайнер | 7h | 61.8 | 61 |
| 49 | 11.21 | Совещание 21 | 1h | 2025-07-23 10:00 | 2025-07-23 11:00 | 2025-07-23 10:00 | 2025-07-23 11:00 | 1h | 22.92d | 15d | start no earlier than 2025-07-23 10:00 | 3D аниматор; Web-дизайнер; Ведущий программист; Мультимедиа-корреспондент; Системный аналитик; Технический писатель; Художник-дизайнер | 7h | 61.8 | 61 |
| 50 | 11.22 | Совещание 22 | 1h | 2025-07-30 10:00 | 2025-07-30 11:00 | 2025-07-30 10:00 | 2025-07-30 11:00 | 1h | 17.92d | 10d | start no earlier than 2025-07-30 10:00 | 3D аниматор; Web-дизайнер; Ведущий программист; Мультимедиа-корреспондент; Системный аналитик; Технический писатель; Художник-дизайнер | 7h | 61.8 | 61 |
| 51 | 11.23 | Совещание 23 | 1h | 2025-08-06 10:00 | 2025-08-06 11:00 | 2025-08-06 10:00 | 2025-08-06 11:00 | 1h | 12.92d | 5d | start no earlier than 2025-08-06 10:00 | 3D аниматор; Web-дизайнер; Ведущий программист; Мультимедиа-корреспондент; Системный аналитик; Технический писатель; Художник-дизайнер | 7h | 61.8 | 61 |
| 52 | 11.24 | Совещание 24 | 1h | 2025-08-13 10:00 | 2025-08-13 11:00 | 2025-08-13 10:00 | 2025-08-13 11:00 | 1h | 7.92d | 0d | start no earlier than 2025-08-13 10:00 | 3D аниматор; Web-дизайнер; Ведущий программист; Мультимедиа-корреспондент; Системный аналитик; Технический писатель; Художник-дизайнер | 7h | 61.8 | 61 |
