# Создание карты города

Schedule from MS Project, 2025-03-03 to 2025-08-18, status date 2025-05-15, costs in ₽, A marks actual dates.
Команда разработчиков из 16 человек занимается созданием карты города на основе собственного модуля отображения. Проект должен быть завершен в течение 6 месяцев. Бюджет проекта: 50000 рублей.

## Calendars

- Стандартный: Mon-Fri 09:00-13:00, 14:00-18:00; Sat-Sun off. Exceptions (off unless hours are given): 2025-03-07 09:00-13:00, 14:00-17:00 (Сокращенный рабочий день перед 8 марта), 2025-04-30 09:00-13:00, 14:00-17:00 (Сокращенный рабочий день перед 1 мая), 2025-05-01 (Праздник Весны и Труда (+ перенос с 04.01.25)), 2025-05-02 (Перенос с 04.01.25), 2025-05-08 (23 февраля (перенос)), 2025-05-09 to 2025-05-11 (День Победы), 2025-06-11 09:00-13:00, 14:00-17:00 (Сокращенный рабочий день перед 12 июня), 2025-06-12 (День России), 2025-06-13 (8 марта (перенос)).

## Resources

| Resource | Group | Rate | Cost per use |
| --- | --- | --- | --- |
| Ведущий программист | Программирование | 10 | 100 |
| Программист#1 | Программирование | 7 | 50 |
| Программист#2 | Программирование | 7 | 50 |
| Программист#3 | Программирование | 7 | 50 |
| Программист#4 | Программирование | 7 | 50 |
| Системный аналитик | Анализ | 20 | 300 |
| Художник-дизайнер | Дизайн | 8 | 70 |
| Технический писатель | Документация | 5 | 20 |
| Web-дизайнер | Internet | 7 | 50 |
| 3D аниматор | Дизайн | 8.8 | 70 |
| Мультимедиа-корреспондент | М-медиа | 3 | 20 |
| Наборщик данных#1 | Ввод данных | 2 | 10 |
| Наборщик данных#2 | Ввод данных | 2 | 10 |
| Наборщик данных#3 | Ввод данных | 2 | 10 |
| Наборщик данных#4 | Ввод данных | 2 | 10 |
| Наборщик данных#5 | Ввод данных | 2 | 10 |
| Аренда сервера | Аренда | 2 |  |
| Собственный сервер | Сервер | 3800 |  |
| Специализированное ПО | ПО | 5000 | 700 |

## Schedule

| ID | WBS | Task | Type | Duration | Start | Finish | Predecessors | Complete | Remaining | Baseline start | Baseline finish | Baseline duration | Total slack | Free slack | Resources | Work | Actual work | Cost | Baseline cost | Actual cost |
| --- | --- | --- | --- | --- | --- | --- | --- | --- | --- | --- | --- | --- | --- | --- | --- | --- | --- | --- | --- | --- |
| 1 | 1 | Начало проекта | milestone | 0w | 2025-03-03 09:00 A | 2025-03-03 09:00 A |  | 100% |  | 2025-03-03 09:00 | 2025-03-03 09:00 | 0w |  |  |  |  |  |  |  |  |
| 2 | 2 | **Создание интерфейса** |  | 90.29d | 2025-03-03 09:00 A | 2025-07-15 15:20 | 1 | 84% | 14.26d | 2025-03-03 09:00 | 2025-07-16 11:48 | 90.98d | 0d |  |  | 440h | 320h | 4,839.6 | 5,650 | 3,739.6 |
| 3 | 2.1 | **Разработка дизайна интерфейса** |  | 30.62d | 2025-03-03 09:00 A | 2025-04-14 16:00 A |  | 100% |  | 2025-03-03 09:00 | 2025-04-07 16:00 | 25.62d |  |  |  | 320h | 320h | 2,899.6 | 2,770 | 2,899.6 |
| 4 | 2.1.1 | Разработка 2D графических элементов |  | 3w | 2025-03-03 09:00 A | 2025-03-24 13:00 A |  | 100% |  | 2025-03-03 09:00 | 2025-03-24 13:00 | 3w |  |  | Художник-дизайнер | 120h | 120h | 1,030 | 1,030 | 1,030 |
| 5 | 2.1.2 | Разработка 3D графических элементов |  | 2w | 2025-03-03 09:00 A | 2025-03-24 12:00 A | 4SS | 100% |  | 2025-03-03 09:00 | 2025-03-17 12:00 | 2w |  |  | 3D аниматор | 80h | 80h | 743.6 | 710 | 743.6 |
| 6 | 2.1.3 | Создание заставки |  | 3w | 2025-03-24 12:00 A | 2025-04-14 16:00 A | 5 | 100% |  | 2025-03-17 12:00 | 2025-04-07 16:00 | 3w |  |  | 3D аниматор | 120h | 120h | 1,126 | 1,030 | 1,126 |
| 7 | 2.2 | Программирование интерфейса |  | 1.5w | 2025-07-04 10:20 | 2025-07-15 15:20 | 3, 12 |  |  | 2025-07-04 16:48 | 2025-07-16 11:48 | 1.5w | 0d |  | Программист#3; Программист#2 | 120h |  | 940 | 1,880 |  |
| 8 | 3 | **Построение базы объектов** |  | 91.75d | 2025-03-26 09:00 A | 2025-08-08 18:00 |  | 26% | 68d | 2025-03-24 14:00 | 2025-08-08 11:00 | 92.5d | 5.42d |  | Аренда сервера; Собственный сервер | 2855h | 431h | 13,930 | 16,200 | 4,300 |
| 9 | 3.1 | Анализ и построение структуры базы объектов |  | 2w | 2025-03-26 09:00 A | 2025-04-14 16:00 A |  | 100% |  | 2025-03-24 14:00 | 2025-04-07 16:00 | 2w |  |  | Системный аналитик | 80h | 80h | 1,900 | 1,900 | 1,900 |
| 10 | 3.2 | Программирование средств обработки базы объектов |  | 3w | 2025-04-09 12:00 A | 2025-05-14 17:00 | 9 | 80% | 0.6w | 2025-04-07 16:00 | 2025-05-14 10:00 | 3w | 14.87d | 0d | Программист#3; Программист#4; Программист#1; Программист#2 | 240h | 216h | 2,110 | 1,880 | 1,870 |
| 11 | 3.3 | Наполнение базы объектов |  | 12w | 2025-05-14 17:00 | 2025-08-08 18:00 | 10 |  |  | 2025-05-14 10:00 | 2025-08-08 11:00 | 12w | 14.87d |  | Наборщик данных#1; Наборщик данных#2; Наборщик данных#3; Наборщик данных#4; Наборщик данных#5 | 2400h |  | 4,850 | 4,850 |  |
| 12 | 4 | **Создание ядра GIS** |  | 82.79d | 2025-03-03 09:00 A | 2025-07-04 10:20 |  | 51% | 40.7d | 2025-03-03 09:00 | 2025-07-04 16:48 | 83.48d | 0d |  |  | 1531.79h | 529.6h | 15,726.74 | 18,293.44 | 7,158 |
| 13 | 4.1 | Анализ и проектирование ядра |  | 3w | 2025-03-03 09:00 A | 2025-03-31 13:00 A |  | 100% |  | 2025-03-03 09:00 | 2025-03-24 13:00 | 3w |  |  | Системный аналитик; Ведущий программист | 240h | 240h | 4,000 | 4,000 | 4,000 |
| 14 | 4.2 | Создание модели ядра |  | 5w | 2025-03-31 14:00 A | 2025-05-13 10:00 A | 13 | 100% |  | 2025-03-24 14:00 | 2025-04-29 10:00 | 5.12w |  |  | Ведущий программист [80%]; Программист#1 | 289.6h | 289.6h | 2,648 | 3,550 | 2,648 |
| 15 | 4.3 | Тестирование модели ядра |  | 0.52w | 2025-05-16 09:00 | 2025-05-20 14:57 | 14 |  |  | 2025-05-14 10:00 | 2025-05-21 10:00 | 1w | 0d |  | Программист#2; Программист#3 | 40h |  | 380.01 | 330 |  |
| 16 | 4.4 | Создание рабочей версии ядра |  | 7.21w | 2025-05-20 14:57 | 2025-07-04 10:20 | 15 |  |  | 2025-05-21 10:00 | 2025-07-04 16:48 | 6.12w | 0d |  | Программист#1; Программист#2; Программист#3; Программист#4 | 962.19h |  | 7,698.74 | 9,413.44 |  |
| 17 | 5 | Создание мультимедиа-наполнения |  | 6w | 2025-04-14 16:00 A | 2025-06-02 16:00 | 3 | 58% | 2.5w | 2025-04-07 16:00 | 2025-05-26 16:00 | 6w | 52.55d |  | Мультимедиа-корреспондент; Специализированное ПО | 240h | 140h | 6,440 | 740 | 4,056.67 |
| 18 | 6 | Создание справочной системы |  | 2w | 2025-07-28 09:00 | 2025-08-11 13:00 | 7 |  |  | 2025-07-25 15:48 | 2025-08-08 17:48 | 2w | 4.92d |  | Технический писатель | 80h |  | 420 | 420 |  |
| 19 | 7 | **Создание руководства пользователя** |  | 17.75d | 2025-07-01 15:20 | 2025-07-25 12:20 | 7FS-10d |  |  | 2025-07-02 11:48 | 2025-07-25 15:48 | 17.38d | 0d |  |  | 160h |  | 1,010 | 1,010 |  |
| 20 | 7.1 | Разработка дизайна руководства |  | 1w | 2025-07-01 15:20 | 2025-07-08 17:20 |  |  |  | 2025-07-02 11:48 | 2025-07-09 12:48 | 1w | 0d |  | Художник-дизайнер | 40h |  | 390 | 390 |  |
| 21 | 7.2 | Написание руководства пользователя |  | 3w | 2025-07-03 15:20 | 2025-07-25 12:20 | 20SS+2d |  |  | 2025-07-04 11:48 | 2025-07-25 15:48 | 3w | 0d |  | Технический писатель | 120h |  | 620 | 620 |  |
| 22 | 8 | **Создание web-сайта и поддержка** |  | 24.12d | 2025-07-03 15:20 | 2025-08-06 16:20 |  |  |  | 2025-07-04 11:48 | 2025-08-06 17:48 | 23.62d | 0d |  |  | 248h |  | 2,138 | 2,106 |  |
| 23 | 8.1 | Разработка структуры сайта |  | 1d | 2025-07-03 15:20 | 2025-07-04 15:20 | 21SS |  |  | 2025-07-04 11:48 | 2025-07-07 11:48 | 1d | 0d |  | Web-дизайнер | 8h |  | 106 | 106 |  |
| 24 | 8.2 | Разработка дизайна сайта |  | 1.38w | 2025-07-04 15:20 | 2025-07-16 09:20 | 23 |  |  | 2025-07-07 11:48 | 2025-07-16 14:48 | 1.4w | 0d |  | Web-дизайнер; 3D аниматор; Художник-дизайнер | 120h |  | 1,142 | 1,110 |  |
| 25 | 8.3 | Наполнение сайта |  | 3w | 2025-07-16 09:20 | 2025-08-06 16:20 | 24 |  |  | 2025-07-16 14:48 | 2025-08-06 17:48 | 3w | 0d |  | Web-дизайнер | 120h |  | 890 | 890 |  |
| 26 | 9 | Тестирование сайта |  | 2.53w | 2025-07-30 16:20 | 2025-08-18 12:22 | 22FS-1w |  |  | 2025-07-30 17:48 | 2025-08-18 10:22 | 2.44w | 0d |  | Программист#2; Программист#3; Программист#4 | 300h |  | 2,250 | 3,945.49 |  |
| 27 | 10 | Сдача сайта в эксплуатацию | milestone | 0w | 2025-08-18 12:22 | 2025-08-18 12:22 | 26 |  |  | 2025-08-18 10:22 | 2025-08-18 10:22 | 0w | 0d |  |  |  |  |  |  |  |

| ID | WBS | Task | Duration | Start | Finish | Complete | Remaining | Baseline start | Baseline finish | Baseline duration | Total slack | Constraint | Resources | Work | Actual work | Cost | Baseline cost | Actual cost |
| --- | --- | --- | --- | --- | --- | --- | --- | --- | --- | --- | --- | --- | --- | --- | --- | --- | --- | --- |
| 28 | 11 | **Совещание** | 108.75d | 2025-03-05 10:00 A | 2025-08-13 11:00 | 46% | 58.91d | 2025-03-05 10:00 | 2025-08-13 11:00 | 108.75d | 3.17d |  |  | 166.6h | 75.6h | 3,169.6 | 1,464 | 1,066.2 |
| 29 | 11.1 | Совещание 1 | 1h | 2025-03-05 10:00 A | 2025-03-05 11:00 A | 100% |  | 2025-03-05 10:00 | 2025-03-05 11:00 | 1h |  | start no earlier than 2025-03-05 10:00 | 3D аниматор; Web-дизайнер; Ведущий программист; Мультимедиа-корреспондент; Системный аналитик; Технический писатель; Художник-дизайнер | 7h | 7h | 61 | 61 | 61 |
| 30 | 11.2 | Совещание 2 | 1h | 2025-03-12 10:00 A | 2025-03-12 11:00 | 99% | 0h | 2025-03-12 10:00 | 2025-03-12 11:00 | 1h | 116.37d | start no earlier than 2025-03-12 10:00 | 3D аниматор; Web-дизайнер; Ведущий программист; Мультимедиа-корреспондент; Системный аналитик; Технический писатель; Художник-дизайнер | 6h | 6h | 53 | 61 | 53 |
| 31 | 11.3 | Совещание 3 | 1h | 2025-03-19 10:00 A | 2025-03-19 11:00 A | 100% |  | 2025-03-19 10:00 | 2025-03-19 11:00 | 1h |  | start no earlier than 2025-03-19 10:00 | 3D аниматор; Web-дизайнер; Ведущий программист; Мультимедиа-корреспондент; Системный аналитик; Технический писатель; Художник-дизайнер | 7h | 7h | 61.8 | 61 | 61.8 |
| 32 | 11.4 | Совещание 4 | 1h | 2025-03-26 10:00 A | 2025-03-26 11:00 A | 100% |  | 2025-03-26 10:00 | 2025-03-26 11:00 | 1h |  | start no earlier than 2025-03-26 10:00 | 3D аниматор; Web-дизайнер; Ведущий программист; Мультимедиа-корреспондент; Системный аналитик; Технический писатель; Художник-дизайнер | 7h | 7h | 61.8 | 61 | 61.8 |
| 33 | 11.5 | Совещание 5 | 1h | 2025-04-02 10:00 A | 2025-04-02 11:00 A | 100% |  | 2025-04-02 10:00 | 2025-04-02 11:00 | 1h |  | start no earlier than 2025-04-02 10:00 | 3D аниматор; Web-дизайнер; Ведущий программист; Мультимедиа-корреспондент; Системный аналитик; Технический писатель; Художник-дизайнер | 7h | 7h | 61.8 | 61 | 61.8 |
| 34 | 11.6 | Совещание 6 | 1h | 2025-04-09 10:00 A | 2025-04-09 11:00 A | 100% |  | 2025-04-09 10:00 | 2025-04-09 11:00 | 1h |  | start no earlier than 2025-04-09 10:00 | 3D аниматор; Web-дизайнер; Ведущий программист [80%]; Мультимедиа-корреспондент; Системный аналитик; Технический писатель; Художник-дизайнер | 6.8h | 6.8h | 59.8 | 61 | 59.8 |
| 35 | 11.7 | Совещание 7 | 1h | 2025-04-16 10:00 A | 2025-04-16 11:00 A | 100% |  | 2025-04-16 10:00 | 2025-04-16 11:00 | 1h |  | start no earlier than 2025-04-16 10:00 | 3D аниматор; Web-дизайнер; Ведущий программист [80%]; Мультимедиа-корреспондент; Системный аналитик; Технический писатель; Художник-дизайнер | 6.8h | 6.8h | 59.8 | 61 | 59.8 |
| 36 | 11.8 | Совещание 8 | 1h | 2025-04-23 10:00 A | 2025-04-23 11:00 A | 100% |  | 2025-04-23 10:00 | 2025-04-23 11:00 | 1h |  | start no earlier than 2025-04-23 10:00 | 3D аниматор; Web-дизайнер; Мультимедиа-корреспондент; Системный аналитик; Технический писатель; Художник-дизайнер; Программист#1 | 7h | 7h | 161.8 | 61 | 161.8 |
| 37 | 11.9 | Совещание 9 | 1h | 2025-04-30 10:00 A | 2025-04-30 11:00 A | 100% |  | 2025-04-30 10:00 | 2025-04-30 11:00 | 1h |  | start no earlier than 2025-04-30 10:00 | 3D аниматор; Web-дизайнер; Мультимедиа-корреспондент; Системный аналитик; Технический писатель; Художник-дизайнер; Программист#1 | 7h | 7h | 161.8 | 61 | 161.8 |
| 38 | 11.10 | Совещание 10 | 1h | 2025-05-07 10:00 A | 2025-05-07 11:00 A | 100% |  | 2025-05-07 10:00 | 2025-05-07 11:00 | 1h |  | start no earlier than 2025-05-07 10:00 | 3D аниматор; Web-дизайнер; Мультимедиа-корреспондент; Системный аналитик; Технический писатель; Художник-дизайнер; Программист#1 | 7h | 7h | 161.8 | 61 | 161.8 |
| 39 | 11.11 | Совещание 11 | 1h | 2025-05-14 10:00 A | 2025-05-14 11:00 A | 100% |  | 2025-05-14 10:00 | 2025-05-14 11:00 | 1h |  | start no earlier than 2025-05-14 10:00 | 3D аниматор; Web-дизайнер; Мультимедиа-корреспондент; Системный аналитик; Технический писатель; Художник-дизайнер; Программист#1 | 7h | 7h | 161.8 | 61 | 161.8 |
| 40 | 11.12 | Совещание 12 | 1h | 2025-05-21 10:00 | 2025-05-21 11:00 |  |  | 2025-05-21 10:00 | 2025-05-21 11:00 | 1h | 70.49d | start no earlier than 2025-05-21 10:00 | 3D аниматор; Web-дизайнер; Мультимедиа-корреспондент; Системный аналитик; Технический писатель; Художник-дизайнер; Программист#1 | 7h |  | 161.8 | 61 |  |
| 41 | 11.13 | Совещание 13 | 1h | 2025-05-28 10:00 | 2025-05-28 11:00 |  |  | 2025-05-28 10:00 | 2025-05-28 11:00 | 1h | 65.49d | start no earlier than 2025-05-28 10:00 | 3D аниматор; Web-дизайнер; Мультимедиа-корреспондент; Системный аналитик; Технический писатель; Художник-дизайнер; Программист#1 | 7h |  | 161.8 | 61 |  |
| 42 | 11.14 | Совещание 14 | 1h | 2025-06-04 10:00 | 2025-06-04 11:00 |  |  | 2025-06-04 10:00 | 2025-06-04 11:00 | 1h | 60.49d | start no earlier than 2025-06-04 10:00 | 3D аниматор; Web-дизайнер; Мультимедиа-корреспондент; Системный аналитик; Технический писатель; Художник-дизайнер; Программист#1 | 7h |  | 161.8 | 61 |  |
| 43 | 11.15 | Совещание 15 | 1h | 2025-06-11 10:00 | 2025-06-11 11:00 |  |  | 2025-06-11 10:00 | 2025-06-11 11:00 | 1h | 55.49d | start no earlier than 2025-06-11 10:00 | 3D аниматор; Web-дизайнер; Мультимедиа-корреспондент; Системный аналитик; Технический писатель; Художник-дизайнер; Программист#1 | 7h |  | 161.8 | 61 |  |
| 44 | 11.16 | Совещание 16 | 1h | 2025-06-18 10:00 | 2025-06-18 11:00 |  |  | 2025-06-18 10:00 | 2025-06-18 11:00 | 1h | 52.62d | start no earlier than 2025-06-18 10:00 | 3D аниматор; Web-дизайнер; Мультимедиа-корреспондент; Системный аналитик; Технический писатель; Художник-дизайнер; Программист#1 | 7h |  | 161.8 | 61 |  |
| 45 | 11.17 | Совещание 17 | 1h | 2025-06-25 10:00 | 2025-06-25 11:00 |  |  | 2025-06-25 10:00 | 2025-06-25 11:00 | 1h | 47.62d | start no earlier than 2025-06-25 10:00 | 3D аниматор; Web-дизайнер; Мультимедиа-корреспондент; Системный аналитик; Технический писатель; Художник-дизайнер; Программист#1 | 7h |  | 161.8 | 61 |  |
| 46 | 11.18 | Совещание 18 | 1h | 2025-07-02 10:00 | 2025-07-02 11:00 |  |  | 2025-07-02 10:00 | 2025-07-02 11:00 | 1h | 42.62d | start no earlier than 2025-07-02 10:00 | 3D аниматор; Web-дизайнер; Мультимедиа-корреспондент; Системный аналитик; Технический писатель; Художник-дизайнер; Программист#1 | 7h |  | 161.8 | 61 |  |
| 47 | 11.19 | Совещание 19 | 1h | 2025-07-09 10:00 | 2025-07-09 11:00 |  |  | 2025-07-09 10:00 | 2025-07-09 11:00 | 1h | 37.62d | start no earlier than 2025-07-09 10:00 | 3D аниматор; Web-дизайнер; Мультимедиа-корреспондент; Системный аналитик; Технический писатель; Художник-дизайнер; Программист#1 | 7h |  | 161.8 | 61 |  |
| 48 | 11.20 | Совещание 20 | 1h | 2025-07-16 10:00 | 2025-07-16 11:00 |  |  | 2025-07-16 10:00 | 2025-07-16 11:00 | 1h | 32.62d | start no earlier than 2025-07-16 10:00 | 3D аниматор; Web-дизайнер; Мультимедиа-корреспондент; Системный аналитик; Технический писатель; Художник-дизайнер; Программист#1 | 7h |  | 161.8 | 61 |  |
| 49 | 11.21 | Совещание 21 | 1h | 2025-07-23 10:00 | 2025-07-23 11:00 |  |  | 2025-07-23 10:00 | 2025-07-23 11:00 | 1h | 27.62d | start no earlier than 2025-07-23 10:00 | 3D аниматор; Web-дизайнер; Мультимедиа-корреспондент; Системный аналитик; Технический писатель; Художник-дизайнер; Программист#1 | 7h |  | 161.8 | 61 |  |
| 50 | 11.22 | Совещание 22 | 1h | 2025-07-30 10:00 | 2025-07-30 11:00 |  |  | 2025-07-30 10:00 | 2025-07-30 11:00 | 1h | 22.62d | start no earlier than 2025-07-30 10:00 | 3D аниматор; Web-дизайнер; Мультимедиа-корреспондент; Системный аналитик; Технический писатель; Художник-дизайнер; Программист#1 | 7h |  | 161.8 | 61 |  |
| 51 | 11.23 | Совещание 23 | 1h | 2025-08-06 10:00 | 2025-08-06 11:00 |  |  | 2025-08-06 10:00 | 2025-08-06 11:00 | 1h | 17.62d | start no earlier than 2025-08-06 10:00 | 3D аниматор; Web-дизайнер; Мультимедиа-корреспондент; Системный аналитик; Технический писатель; Художник-дизайнер; Программист#1 | 7h |  | 161.8 | 61 |  |
| 52 | 11.24 | Совещание 24 | 1h | 2025-08-13 10:00 | 2025-08-13 11:00 |  |  | 2025-08-13 10:00 | 2025-08-13 11:00 | 1h | 12.62d | start no earlier than 2025-08-13 10:00 | 3D аниматор; Web-дизайнер; Мультимедиа-корреспондент; Системный аналитик; Технический писатель; Художник-дизайнер; Программист#1 | 7h |  | 161.8 | 61 |  |
