# Создание Интернет-компании

Schedule from MS Project, 2025-04-07 to 2025-07-04, status date 2025-06-12, costs in ₽, A marks actual dates.
Группа из 7 человек, длительность не более 3 месяцев, бюджет не более 650 тыс. руб.

## Calendars

- Стандартный: Mon-Fri 09:00-13:00, 14:00-18:00; Sat-Sun off. Exceptions (off unless hours are given): 2025-05-01 (Первое мая), 2025-05-02 (Перенос с 4 января), 2025-05-08 (Перенос 23 февраяля), 2025-05-09 (День Победы), 2025-06-12 (День России), 2025-06-13 (Перенос 8 марта).

## Resources

| Resource | Group | Unit | Rate | Notes |
| --- | --- | --- | --- | --- |
| Соколов | Программисты |  | 437.5 | ведущий программист |
| Соломин | Программисты |  | 343.75 |  |
| Тимофеев | Программисты |  | 312.5 |  |
| Яковлева | Программисты |  | 312.5 |  |
| Петров | Дизайнеры |  | 468.75 | руководитель дизайнерской группы |
| Кущнецов | Дизайнеры |  | 312.5 |  |
| Фомина | Редактор сайта |  | 250 |  |
| Преподаватели | Преподаватели |  | 87.5 |  |
| Программное обеспечение | ПО |  | 14.42 |  |
| Картриджи для принтера | Расходные материалы |  | 2500 |  |
| Бумага | Расходные материалы | пач | 200 |  |

## Schedule

| ID | WBS | Task | Type | Duration | Start | Finish | Predecessors | Complete | Remaining | Baseline start | Baseline finish | Baseline duration | Total slack | Free slack | Resources | Work | Actual work | Cost | Baseline cost | Actual cost |
| --- | --- | --- | --- | --- | --- | --- | --- | --- | --- | --- | --- | --- | --- | --- | --- | --- | --- | --- | --- | --- |
| 1 | 1 | Начало проекта | milestone | 0d | 2025-04-07 A | 2025-04-07 A |  | 100% |  | 2025-04-07 | 2025-04-07 | 0d |  |  |  |  |  |  |  |  |
| 2 | 2 | Установка ПО |  | 7.5d | 2025-04-08 A | 2025-04-17 A | 1FS+1d | 100% |  | 2025-04-08 | 2025-04-17 | 7.5d |  |  | Программное обеспечение; Соколов | 120h | 120h | 27,115.38 | 27,115.38 | 27,115.38 |
| 3 | 3 | Обучение персонала |  | 25d | 2025-04-22 A | 2025-05-30 A | 2SS+10d | 100% |  | 2025-04-22 | 2025-05-30 | 25d |  |  | Преподаватели [300%]; Бумага [0.02 пач]; Картриджи для принтера; Петров; Тимофеев; Соломин; Яковлева; Кущнецов; Соколов | 1440h | 1440h | 395,100 | 395,100 | 395,100 |
| 4 | 4 | **Разработка представительских сайтов** |  | 21.33d | 2025-06-02 A | 2025-07-03 | 3 | 70% | 6.4d | 2025-06-02 | 2025-07-03 | 21.33d | 1.17d | 0d |  | 80h | 56h | 26,000 | 26,000 | 18,200 |
| 5 | 4.1 | **Разработка сайта 1** |  | 5d | 2025-06-02 A | 2025-06-06 A |  | 100% |  | 2025-06-02 | 2025-06-06 | 5d |  |  |  | 40h | 40h | 13,000 | 13,000 | 13,000 |
| 6 | 4.1.1 | Разработка дизайна сайта 1 |  | 2d | 2025-06-02 A | 2025-06-03 A |  | 100% |  | 2025-06-02 | 2025-06-03 | 2d |  |  | Кущнецов | 16h | 16h | 5,000 | 5,000 | 5,000 |
| 7 | 4.1.2 | Программирование сайта 1 |  | 3d | 2025-06-04 A | 2025-06-06 A | 6 | 100% |  | 2025-06-04 | 2025-06-06 | 3d |  |  | Тимофеев | 24h | 24h | 7,500 | 7,500 | 7,500 |
| 8 | 4.2 | **Разработка сайта 2** |  | 18.33d | 2025-06-05 A | 2025-07-03 | 5FS-2d | 40% | 11d | 2025-06-05 | 2025-07-03 | 18.33d | 1.17d |  |  | 40h | 16h | 13,000 | 13,000 | 5,200 |
| 9 | 4.2.1 | Разработка дизайна сайта 2 |  | 2d | 2025-06-05 A | 2025-06-06 A |  | 100% |  | 2025-06-05 | 2025-06-06 | 2d |  |  | Кущнецов | 16h | 16h | 5,000 | 5,000 | 5,000 |
| 10 | 4.2.2 | Программирование сайта 2 |  | 3d | 2025-06-25 | 2025-07-03 | 9 |  |  | 2025-06-25 | 2025-07-03 | 3d | 1.17d |  | Тимофеев | 24h |  | 7,500 | 7,500 |  |
| 11 | 5 | Представительские сайты создани | milestone | 0d | 2025-07-03 | 2025-07-03 | 4 |  |  | 2025-07-03 | 2025-07-03 | 0d | 1.17d |  |  |  |  |  |  |  |
| 12 | 6 | **Разработка корпоративного сайта** |  | 22.5d | 2025-06-02 A | 2025-07-04 | 3 | 24% | 17.12d | 2025-06-02 | 2025-07-04 | 22.5d | 0d |  |  | 424h | 92h | 146,583.33 | 146,583.33 | 40,175 |
| 13 | 6.1 | Проектирование сайта |  | 5d | 2025-06-02 A | 2025-06-06 A |  | 100% |  | 2025-06-02 | 2025-06-06 | 5d |  |  | Соколов; Петров | 80h | 80h | 36,250 | 36,250 | 36,250 |
| 14 | 6.2 | Программирование сайта |  | 10d | 2025-06-09 A | 2025-06-24 | 13 | 5% | 9.5d | 2025-06-09 | 2025-06-24 | 10d | 0d |  | Соломин; Яковлева; Тимофеев | 240h | 12h | 78,500 | 78,500 | 3,925 |
| 15 | 6.3 | Наполнение сайта |  | 3d | 2025-06-20 | 2025-06-24 | 14FS-3d |  |  | 2025-06-20 | 2025-06-24 | 3d | 0d |  | Фомина | 24h |  | 6,000 | 6,000 |  |
| 16 | 6.4 | Тестирование сайта |  | 5d | 2025-06-25 | 2025-07-04 | 15 |  |  | 2025-06-25 | 2025-07-04 | 5d | 0d |  | Соломин; Яковлева; Тимофеев | 80h |  | 25,833.33 | 25,833.33 |  |
| 17 | 7 | Сдача сайта заказчику | milestone | 0d | 2025-07-04 | 2025-07-04 | 16 |  |  | 2025-07-04 | 2025-07-04 | 0d | 0d |  |  |  |  |  |  |  |
